# Avignon Baseball stadium development

Schedule from MS Project, 2020-06-01 to 2022-12-12, costs in $.

## Calendars

- Standard: Mon-Fri 08:00-12:00, 13:00-17:00; Sat-Sun off. Exceptions (off unless hours are given): 2020-07-01 (Canada Day), 2020-09-07 (Labor Day), 2020-10-12 (Thanks Giving Day), 2020-12-25 (X'Mas), 2020-12-26 (Boxing Day), 2021-01-01 (New Year), 2021-05-17 (Victoria Day), 2021-07-01 (Canada Day), 2021-09-06 (Labor Day), 2021-10-11 (Thanks Giving Day), 2021-12-25 (X'Mas), 2021-12-26 (Boxing Day), 2022-01-01 (New Year), 2022-05-16 (Victoria Day), 2022-07-01 (Canada day), 2022-10-10 (Thanks Giving Day).

## Resources

| Resource |
| --- |
| Site Superintendent |
| Security Team |
| Demo Team |
| Concrete Team |
| Steel Workers |
| Civil Engineer |
| Cleaners |
| Inspections |

## Schedule

| ID | WBS | Task | Type | Duration | Start | Finish | Predecessors | Baseline start | Baseline finish | Baseline duration | Total slack | Free slack | Resources | Work | Cost | Baseline cost |
| --- | --- | --- | --- | --- | --- | --- | --- | --- | --- | --- | --- | --- | --- | --- | --- | --- |
| 1 | 1 | Avignon Baseball Stadium Development | manual | 1d? | 2020-06-01 | 2020-06-01 |  | 2020-06-01 | 2020-06-01 | 1d? |  |  |  |  |  |  |
| 2 | 2 | Harsh Rakeshkumar Bhatt | manual | 1d? | 2020-06-01 | 2020-06-01 |  | 2020-06-01 | 2020-06-01 | 1d? |  |  |  |  |  |  |
| 3 | 3 | 8879116 | manual | 1d? | 2020-06-01 | 2020-06-01 |  | 2020-06-01 | 2020-06-01 | 1d? |  |  |  |  |  |  |
| 5 | 4 | **Avignon Baseball Stadium Development** |  | 649d | 2020-06-01 | 2022-12-12 |  | 2020-06-01 | 2022-12-12 | 649d | 0d |  |  | 16824h | 20,000 | 20,000 |
| 6 | 4.1 | **Clear Stadium Site** |  | 70d | 2020-06-01 | 2020-09-08 |  | 2020-06-01 | 2020-09-08 | 70d | 0d |  |  | 560h |  |  |
| 7 | 4.1.1 | Assessment of Site |  | 20d | 2020-06-01 | 2020-06-26 |  | 2020-06-01 | 2020-06-26 | 20d | 0d |  | Site Superintendent | 160h |  |  |
| 8 | 4.1.2 | Grading and Levelling |  | 15d | 2020-06-29 | 2020-07-20 | 7 | 2020-06-29 | 2020-07-20 | 15d | 0d |  | Site Superintendent | 120h |  |  |
| 9 | 4.1.3 | Sediment Control |  | 15d | 2020-07-21 | 2020-08-10 | 8 | 2020-07-21 | 2020-08-10 | 15d | 0d |  | Civil Engineer | 120h |  |  |
| 10 | 4.1.4 | Restoration of Site |  | 20d | 2020-08-11 | 2020-09-08 | 9 | 2020-08-11 | 2020-09-08 | 20d | 0d |  | Site Superintendent | 160h |  |  |
| 11 | 4.1.5 | Clear stadium site complete | milestone | 0d | 2020-09-08 | 2020-09-08 | 10 | 2020-09-08 | 2020-09-08 | 0d | 0d |  |  |  |  |  |
| 12 | 4.2 | **Demolish building** |  | 30d | 2020-09-09 | 2020-10-21 | 6 | 2020-09-09 | 2020-10-21 | 30d | 145d | 0d |  | 480h |  |  |
| 13 | 4.2.1 | Legitimate Permits |  | 10d | 2020-09-09 | 2020-09-22 |  | 2020-09-09 | 2020-09-22 | 10d | 145d | 0d | Inspections [0.1%] |  |  |  |
| 14 | 4.2.2 | Demolition of structure |  | 10d | 2020-09-23 | 2020-10-06 | 13 | 2020-09-23 | 2020-10-06 | 10d | 145d | 0d | Civil Engineer; Concrete Team; Site Superintendent; Steel Workers; Security Team | 400h |  |  |
| 15 | 4.2.3 | The site's safety and security |  | 6d | 2020-10-07 | 2020-10-15 | 14 | 2020-10-07 | 2020-10-15 | 6d | 145d | 0d | Security Team | 48h |  |  |
| 16 | 4.2.4 | Waste Management |  | 4d | 2020-10-16 | 2020-10-21 | 15 | 2020-10-16 | 2020-10-21 | 4d | 145d | 0d | Cleaners | 32h |  |  |
| 17 | 4.2.5 | Demolish building complete | milestone | 0d | 2020-10-21 | 2020-10-21 | 16 | 2020-10-21 | 2020-10-21 | 0d | 145d |  |  |  |  |  |
| 18 | 4.3 | **Set up construction site** |  | 30d | 2020-10-22 | 2020-12-02 | 12 | 2020-10-22 | 2020-12-02 | 30d | 519d |  |  | 560h |  |  |
| 19 | 4.3.1 | Temporary Fencing and Signage |  | 5d | 2020-10-22 | 2020-10-28 |  | 2020-10-22 | 2020-10-28 | 5d | 519d | 0d | Security Team | 40h |  |  |
| 20 | 4.3.2 | Installation of temporary utilities |  | 10d | 2020-10-29 | 2020-11-11 | 19 | 2020-10-29 | 2020-11-11 | 10d | 519d | 0d | Steel Workers; Security Team; Cleaners | 240h |  |  |
| 21 | 4.3.3 | Construction office |  | 10d | 2020-11-12 | 2020-11-25 | 20 | 2020-11-12 | 2020-11-25 | 10d | 519d | 0d | Security Team; Concrete Team; Site Superintendent | 240h |  |  |
| 22 | 4.3.4 | Material Storage |  | 5d | 2020-11-26 | 2020-12-02 | 21 | 2020-11-26 | 2020-12-02 | 5d | 519d | 0d | Concrete Team | 40h |  |  |
| 23 | 4.3.5 | Set up construction site complete | milestone | 0d | 2020-12-02 | 2020-12-02 | 22 | 2020-12-02 | 2020-12-02 | 0d | 519d |  |  |  |  |  |
| 24 | 4.4 | **Drive support piling** |  | 120d | 2020-09-09 | 2021-02-26 | 6 | 2020-09-09 | 2021-02-26 | 120d | 0d |  |  | 1120h |  |  |
| 25 | 4.4.1 | Temporary Fencing and Signage |  | 30d | 2020-09-09 | 2020-10-21 |  | 2020-09-09 | 2020-10-21 | 30d | 0d |  | Steel Workers | 240h |  |  |
| 26 | 4.4.2 | Installation of temporary utilities |  | 60d | 2020-10-22 | 2021-01-15 | 25 | 2020-10-22 | 2021-01-15 | 60d | 0d |  | Demo Team | 480h |  |  |
| 27 | 4.4.3 | Construction office |  | 20d | 2021-01-18 | 2021-02-12 | 26 | 2021-01-18 | 2021-02-12 | 20d | 0d |  | Civil Engineer; Site Superintendent; Inspections [0.1%] | 320h |  |  |
| 28 | 4.4.4 | Material Storage |  | 10d | 2021-02-15 | 2021-02-26 | 27 | 2021-02-15 | 2021-02-26 | 10d | 0d |  | Concrete Team | 80h |  |  |
| 29 | 4.4.5 | Drive support pilling complete | milestone | 0d | 2021-02-26 | 2021-02-26 | 28 | 2021-02-26 | 2021-02-26 | 0d | 0d |  |  |  |  |  |

| ID | WBS | Task | Type | Duration | Start | Finish | Predecessors | Baseline start | Baseline finish | Baseline duration | Total slack | Free slack | Resources | Work |
| --- | --- | --- | --- | --- | --- | --- | --- | --- | --- | --- | --- | --- | --- | --- |
| 30 | 4.5 | **Pour lower concrete bowl** |  | 55d | 2021-03-01 | 2021-05-14 | 24 | 2021-03-01 | 2021-05-14 | 55d | 0d |  |  | 520h |
| 31 | 4.5.1 | Preparation of Formwork |  | 10d | 2021-03-01 | 2021-03-12 |  | 2021-03-01 | 2021-03-12 | 10d | 0d |  | Demo Team | 80h |
| 32 | 4.5.2 | Concrete Mixing |  | 10d | 2021-03-15 | 2021-03-26 | 31 | 2021-03-15 | 2021-03-26 | 10d | 0d |  | Concrete Team; Site Superintendent | 160h |
| 33 | 4.5.3 | Install Reinforcement |  | 15d | 2021-03-29 | 2021-04-16 | 32 | 2021-03-29 | 2021-04-16 | 15d | 0d |  | Site Superintendent | 120h |
| 34 | 4.5.4 | Formwork removal |  | 20d | 2021-04-19 | 2021-05-14 | 33 | 2021-04-19 | 2021-05-14 | 20d | 0d |  | Site Superintendent | 160h |
| 35 | 4.5.5 | Pour lower concrete bowl complete | milestone | 0d | 2021-05-14 | 2021-05-14 | 34 | 2021-05-14 | 2021-05-14 | 0d | 0d |  |  |  |
| 36 | 4.6 | **Pour main concourse** |  | 120d | 2021-05-18 | 2021-11-04 | 12, 30 | 2021-05-18 | 2021-11-04 | 120d | 0d |  |  | 960h |
| 37 | 4.6.1 | Installation of Formwork |  | 30d | 2021-05-18 | 2021-06-28 |  | 2021-05-18 | 2021-06-28 | 30d | 0d |  | Site Superintendent | 240h |
| 38 | 4.6.2 | Concrete pouring |  | 20d | 2021-06-29 | 2021-07-27 | 37 | 2021-06-29 | 2021-07-27 | 20d | 0d |  | Concrete Team | 160h |
| 39 | 4.6.3 | Concrete delivery |  | 60d | 2021-07-28 | 2021-10-21 | 38 | 2021-07-28 | 2021-10-21 | 60d | 0d |  | Concrete Team | 480h |
| 40 | 4.6.4 | Protection |  | 10d | 2021-10-22 | 2021-11-04 | 39 | 2021-10-22 | 2021-11-04 | 10d | 0d |  | Security Team; Inspections [0.1%] | 80h |
| 41 | 4.6.5 | Pour main concourse complete | milestone | 0d | 2021-11-04 | 2021-11-04 | 40 | 2021-11-04 | 2021-11-04 | 0d | 0d |  |  |  |
| 42 | 4.7 | **Install playing field** |  | 90d | 2021-05-18 | 2021-09-22 | 12, 30 | 2021-05-18 | 2021-09-22 | 90d | 275d |  |  | 920h |
| 43 | 4.7.1 | Preparation of Field |  | 25d | 2021-05-18 | 2021-06-21 |  | 2021-05-18 | 2021-06-21 | 25d | 275d | 0d | Site Superintendent; Civil Engineer | 400h |
| 44 | 4.7.2 | Install Irrigation System |  | 20d | 2021-06-22 | 2021-07-20 | 43 | 2021-06-22 | 2021-07-20 | 20d | 275d | 0d | Concrete Team | 160h |
| 45 | 4.7.3 | Install drainage System |  | 20d | 2021-07-21 | 2021-08-17 | 44 | 2021-07-21 | 2021-08-17 | 20d | 275d | 0d | Site Superintendent | 160h |
| 46 | 4.7.4 | Grass Installation |  | 25d | 2021-08-18 | 2021-09-22 | 45 | 2021-08-18 | 2021-09-22 | 25d | 275d | 0d | Steel Workers | 200h |
| 47 | 4.7.5 | Install playing field complete | milestone | 0d | 2021-09-22 | 2021-09-22 | 46 | 2021-09-22 | 2021-09-22 | 0d | 275d |  |  |  |
| 48 | 4.8 | **Construct upper steel bowl** |  | 120d | 2021-05-18 | 2021-11-04 | 12, 30 | 2021-05-18 | 2021-11-04 | 120d | 0d |  |  | 1520h |
| 49 | 4.8.1 | Design of steel bowl |  | 30d | 2021-05-18 | 2021-06-28 |  | 2021-05-18 | 2021-06-28 | 30d | 0d |  | Steel Workers | 240h |
| 50 | 4.8.2 | Assembly of steel bowl |  | 30d | 2021-06-29 | 2021-08-10 | 49 | 2021-06-29 | 2021-08-10 | 30d | 0d |  | Steel Workers; Cleaners | 480h |
| 51 | 4.8.3 | Welding of steel bowl |  | 40d | 2021-08-11 | 2021-10-06 | 50 | 2021-08-11 | 2021-10-06 | 40d | 0d |  | Concrete Team; Site Superintendent | 640h |
| 52 | 4.8.4 | Coating and finishing |  | 20d | 2021-10-07 | 2021-11-04 | 51 | 2021-10-07 | 2021-11-04 | 20d | 0d |  | Civil Engineer | 160h |
| 53 | 4.8.5 | Construct upper steel bowl complete | milestone | 0d | 2021-11-04 | 2021-11-04 | 52 | 2021-11-04 | 2021-11-04 | 0d | 0d |  |  |  |

| ID | WBS | Task | Type | Duration | Start | Finish | Predecessors | Baseline start | Baseline finish | Baseline duration | Total slack | Free slack | Resources | Work |
| --- | --- | --- | --- | --- | --- | --- | --- | --- | --- | --- | --- | --- | --- | --- |
| 54 | 4.9 | **Install seats** |  | 140d | 2021-11-05 | 2022-05-20 | 36, 48 | 2021-11-05 | 2022-05-20 | 140d | 0d |  |  | 1920h |
| 55 | 4.9.1 | Layout of seat and design |  | 40d | 2021-11-05 | 2021-12-30 |  | 2021-11-05 | 2021-12-30 | 40d | 0d |  | Site Superintendent | 320h |
| 56 | 4.9.2 | Planning of seat installation |  | 50d | 2021-12-31 | 2022-03-10 | 55 | 2021-12-31 | 2022-03-10 | 50d | 0d |  | Civil Engineer; Site Superintendent; Steel Workers | 1200h |
| 57 | 4.9.3 | Seat accessories |  | 30d | 2022-03-11 | 2022-04-21 | 56 | 2022-03-11 | 2022-04-21 | 30d | 0d |  | Site Superintendent | 240h |
| 58 | 4.9.4 | Quality of seats |  | 20d | 2022-04-22 | 2022-05-20 | 57 | 2022-04-22 | 2022-05-20 | 20d | 0d |  | Civil Engineer | 160h |
| 59 | 4.9.5 | Install seats complete | milestone | 0d | 2022-05-20 | 2022-05-20 | 58 | 2022-05-20 | 2022-05-20 | 0d | 0d |  |  |  |
| 60 | 4.10 | **Build luxury boxes** |  | 90d | 2021-11-05 | 2022-03-10 | 36, 48 | 2021-11-05 | 2022-03-10 | 90d | 155d |  |  | 1520h |
| 61 | 4.10.1 | Planning of luxury box |  | 30d | 2021-11-05 | 2021-12-16 |  | 2021-11-05 | 2021-12-16 | 30d | 155d | 0d | Civil Engineer | 240h |
| 62 | 4.10.2 | Fabrication of materials |  | 20d | 2021-12-17 | 2022-01-13 | 61 | 2021-12-17 | 2022-01-13 | 20d | 155d | 0d | Civil Engineer; Site Superintendent | 320h |
| 63 | 4.10.3 | Installation of HVAC |  | 20d | 2022-01-14 | 2022-02-10 | 62 | 2022-01-14 | 2022-02-10 | 20d | 155d | 0d | Civil Engineer; Site Superintendent; Concrete Team | 480h |
| 64 | 4.10.4 | Technology Integration |  | 20d | 2022-02-11 | 2022-03-10 | 63 | 2022-02-11 | 2022-03-10 | 20d | 155d | 0d | Civil Engineer; Concrete Team; Site Superintendent | 480h |
| 65 | 4.10.5 | Build luxury boxes complete | milestone | 0d | 2022-03-10 | 2022-03-10 | 64 | 2022-03-10 | 2022-03-10 | 0d | 155d | 0d |  |  |
| 66 | 4.11 | **Install electronic scoreboards** |  | 30d | 2022-03-11 | 2022-04-21 | 36, 48 | 2022-03-11 | 2022-04-21 | 30d | 164d |  |  | 360h |
| 67 | 4.11.1 | Scoreboard mounting |  | 5d | 2022-03-11 | 2022-03-17 | 65 | 2022-03-11 | 2022-03-17 | 5d | 164d | 0d | Demo Team; Steel Workers | 80h |
| 68 | 4.11.2 | Installation and design of an electrical system |  | 5d | 2022-03-18 | 2022-03-24 | 67 | 2022-03-18 | 2022-03-24 | 5d | 164d | 0d | Civil Engineer | 40h |
| 69 | 4.11.3 | Testing of scoreboard |  | 10d | 2022-03-25 | 2022-04-07 | 68 | 2022-03-25 | 2022-04-07 | 10d | 164d | 0d | Civil Engineer | 80h |
| 70 | 4.11.4 | User training and its documentation |  | 10d | 2022-04-08 | 2022-04-21 | 69 | 2022-04-08 | 2022-04-21 | 10d | 164d | 0d | Civil Engineer; Site Superintendent; Inspections [0.1%] | 160h |
| 71 | 4.11.5 | Install electronic scoreboards complete | milestone | 0d | 2022-04-21 | 2022-04-21 | 70 | 2022-04-21 | 2022-04-21 | 0d | 164d |  |  |  |
| 72 | 4.12 | **Stadium Infrastructure** |  | 120d | 2021-11-05 | 2022-04-21 | 36, 48 | 2021-11-05 | 2022-04-21 | 120d | 125d |  |  | 1520h |
| 73 | 4.12.1 | Assessment of infrastructure planning |  | 30d | 2021-11-05 | 2021-12-16 |  | 2021-11-05 | 2021-12-16 | 30d | 125d | 0d | Concrete Team | 240h |
| 74 | 4.12.2 | Sanitary system |  | 20d | 2021-12-17 | 2022-01-13 | 73 | 2021-12-17 | 2022-01-13 | 20d | 125d | 0d | Civil Engineer; Cleaners; Demo Team | 480h |
| 75 | 4.12.3 | Network system |  | 10d | 2022-01-14 | 2022-01-27 | 74 | 2022-01-14 | 2022-01-27 | 10d | 125d | 0d | Steel Workers | 80h |
| 76 | 4.12.4 | Saftey Equipment |  | 30d | 2022-01-28 | 2022-03-10 | 75 | 2022-01-28 | 2022-03-10 | 30d | 125d | 0d | Security Team | 240h |
| 77 | 4.12.5 | Signage |  | 30d | 2022-03-11 | 2022-04-21 | 76 | 2022-03-11 | 2022-04-21 | 30d | 125d | 0d | Civil Engineer; Security Team | 480h |
| 78 | 4.12.6 | Stadium Infrastructure complete | milestone | 0d | 2022-04-21 | 2022-04-21 | 77 | 2022-04-21 | 2022-04-21 | 0d | 125d |  |  |  |

| ID | WBS | Task | Type | Duration | Start | Finish | Predecessors | Baseline start | Baseline finish | Baseline duration | Total slack | Free slack | Resources | Work |
| --- | --- | --- | --- | --- | --- | --- | --- | --- | --- | --- | --- | --- | --- | --- |
| 79 | 4.13 | **Construct steel canopy** |  | 75d | 2022-05-23 | 2022-09-05 | 54 | 2022-05-23 | 2022-09-05 | 75d | 0d |  |  | 1000h |
| 80 | 4.13.1 | Canopy Engineering |  | 20d | 2022-05-23 | 2022-06-17 |  | 2022-05-23 | 2022-06-17 | 20d | 0d |  | Civil Engineer; Concrete Team | 320h |
| 81 | 4.13.2 | steel materials |  | 15d | 2022-06-20 | 2022-07-11 | 80 | 2022-06-20 | 2022-07-11 | 15d | 0d |  | Civil Engineer; Site Superintendent; Steel Workers | 360h |
| 82 | 4.13.3 | steel fabrication |  | 15d | 2022-07-12 | 2022-08-01 | 81 | 2022-07-12 | 2022-08-01 | 15d | 0d |  | Steel Workers | 120h |
| 83 | 4.13.4 | Erection |  | 10d | 2022-08-02 | 2022-08-15 | 82 | 2022-08-02 | 2022-08-15 | 10d | 0d |  | Steel Workers | 80h |
| 84 | 4.13.5 | Aesthetic Enhancement |  | 10d | 2022-08-16 | 2022-08-29 | 83 | 2022-08-16 | 2022-08-29 | 10d | 0d |  | Demo Team | 80h |
| 85 | 4.13.6 | Weatherproofing |  | 5d | 2022-08-30 | 2022-09-05 | 84 | 2022-08-30 | 2022-09-05 | 5d | 0d |  | Steel Workers | 40h |
| 86 | 4.13.7 | Construct steel canopy complete | milestone | 0d | 2022-09-05 | 2022-09-05 | 85 | 2022-09-05 | 2022-09-05 | 0d | 0d |  |  |  |
| 87 | 4.14 | **Light Installation** |  | 30d | 2022-09-06 | 2022-10-18 | 79 | 2022-09-06 | 2022-10-18 | 30d | 0d |  |  | 240h |
| 88 | 4.14.1 | Design of lightning |  | 10d | 2022-09-06 | 2022-09-19 |  | 2022-09-06 | 2022-09-19 | 10d | 0d |  | Civil Engineer | 80h |
| 89 | 4.14.2 | Electric Infrastructure |  | 5d | 2022-09-20 | 2022-09-26 | 88 | 2022-09-20 | 2022-09-26 | 5d | 0d |  | Security Team | 40h |
| 90 | 4.14.3 | Installation of lightning Fixture |  | 5d | 2022-09-27 | 2022-10-03 | 89 | 2022-09-27 | 2022-10-03 | 5d | 0d |  | Security Team | 40h |
| 91 | 4.14.4 | Lightning control |  | 5d | 2022-10-04 | 2022-10-11 | 90 | 2022-10-04 | 2022-10-11 | 5d | 0d |  | Steel Workers | 40h |
| 92 | 4.14.5 | Testing |  | 3d | 2022-10-12 | 2022-10-14 | 91 | 2022-10-12 | 2022-10-14 | 3d | 0d |  | Site Superintendent | 24h |
| 93 | 4.14.6 | Procurement of lightning fixture |  | 2d | 2022-10-17 | 2022-10-18 | 92 | 2022-10-17 | 2022-10-18 | 2d | 0d |  | Civil Engineer | 16h |
| 94 | 4.14.7 | Light Installation complete | milestone | 0d | 2022-10-18 | 2022-10-18 | 93 | 2022-10-18 | 2022-10-18 | 0d | 0d |  |  |  |
| 95 | 4.15 | **Build roof supports** |  | 60d | 2021-05-18 | 2021-08-10 | 30 | 2021-05-18 | 2021-08-10 | 60d | 77d | 0d |  | 560h |
| 96 | 4.15.1 | Design of roofs |  | 20d | 2021-05-18 | 2021-06-14 |  | 2021-05-18 | 2021-06-14 | 20d | 87d | 10d | Civil Engineer | 160h |
| 97 | 4.15.2 | Structural Engineering |  | 30d | 2021-05-18 | 2021-06-28 | 96FF | 2021-05-18 | 2021-06-28 | 30d | 77d | 0d | Civil Engineer | 240h |
| 98 | 4.15.3 | Pre-assembly |  | 10d | 2021-06-29 | 2021-07-13 | 97 | 2021-06-29 | 2021-07-13 | 10d | 77d | 0d | Concrete Team | 80h |
| 99 | 4.15.4 | Saftey Inspection |  | 20d | 2021-07-14 | 2021-08-10 | 98 | 2021-07-14 | 2021-08-10 | 20d | 77d | 0d | Inspections [0.1%] |  |
| 100 | 4.15.5 | Procurement of material |  | 5d | 2021-07-14 | 2021-07-20 | 99SS | 2021-07-14 | 2021-07-20 | 5d | 87d | 0d | Concrete Team | 40h |
| 101 | 4.15.6 | Finalization and Integration |  | 5d | 2021-07-21 | 2021-07-27 | 100 | 2021-07-21 | 2021-07-27 | 5d | 87d | 0d | Civil Engineer | 40h |
| 102 | 4.15.7 | Build roof supports complete | milestone | 0d | 2021-07-27 | 2021-07-27 | 101 | 2021-07-27 | 2021-07-27 | 0d | 87d | 10d |  |  |

| ID | WBS | Task | Type | Duration | Start | Finish | Predecessors | Baseline start | Baseline finish | Baseline duration | Total slack | Free slack | Resources | Work |
| --- | --- | --- | --- | --- | --- | --- | --- | --- | --- | --- | --- | --- | --- | --- |
| 103 | 4.16 | **Construct roof** |  | 48d | 2021-08-11 | 2021-10-19 | 95 | 2021-08-11 | 2021-10-19 | 48d | 77d |  |  | 488h |
| 104 | 4.16.1 | Design of roof and Engineering |  | 5d | 2021-08-11 | 2021-08-17 | 102 | 2021-08-11 | 2021-08-17 | 5d | 77d | 0d | Civil Engineer | 40h |
| 105 | 4.16.2 | Materials for roofs |  | 5d | 2021-08-18 | 2021-08-24 | 104 | 2021-08-18 | 2021-08-24 | 5d | 77d | 0d | Civil Engineer; Site Superintendent; Steel Workers | 120h |
| 106 | 4.16.3 | Construction of roof |  | 15d | 2021-08-25 | 2021-09-15 | 105 | 2021-08-25 | 2021-09-15 | 15d | 77d | 0d | Civil Engineer | 120h |
| 107 | 4.16.4 | Roof membrane |  | 10d | 2021-09-16 | 2021-09-29 | 106 | 2021-09-16 | 2021-09-29 | 10d | 77d | 0d | Civil Engineer | 80h |
| 108 | 4.16.5 | Roof ventilation system |  | 8d | 2021-09-30 | 2021-10-12 | 107 | 2021-09-30 | 2021-10-12 | 8d | 77d | 0d | Concrete Team; Site Superintendent | 128h |
| 109 | 4.16.6 | Inspection of final roof and certificate |  | 5d | 2021-10-13 | 2021-10-19 | 108 | 2021-10-13 | 2021-10-19 | 5d | 77d | 0d | Inspections [0.1%] |  |
| 110 | 4.16.7 | construct roof complete | milestone | 0d | 2021-10-19 | 2021-10-19 | 109 | 2021-10-19 | 2021-10-19 | 0d | 77d | 0d |  |  |
| 111 | 4.17 | **Install roof tracks** |  | 90d | 2021-10-20 | 2022-02-22 | 95 | 2021-10-20 | 2022-02-22 | 90d | 77d | 0d |  | 1200h |
| 112 | 4.17.1 | Planning of roof tracks |  | 15d | 2021-10-20 | 2021-11-09 | 110 | 2021-10-20 | 2021-11-09 | 15d | 77d | 0d | Civil Engineer; Concrete Team; Site Superintendent | 360h |
| 113 | 4.17.2 | Material for roof track |  | 10d | 2021-11-10 | 2021-11-23 | 112 | 2021-11-10 | 2021-11-23 | 10d | 77d | 0d | Civil Engineer; Concrete Team | 160h |
| 114 | 4.17.3 | Roof track assembly |  | 15d | 2021-11-24 | 2021-12-14 | 113 | 2021-11-24 | 2021-12-14 | 15d | 77d | 0d | Civil Engineer | 120h |
| 115 | 4.17.4 | Levelling |  | 10d | 2021-12-15 | 2021-12-28 | 114 | 2021-12-15 | 2021-12-28 | 10d | 77d | 0d | Concrete Team | 80h |
| 116 | 4.17.5 | Integration of roof tracks |  | 10d | 2021-12-29 | 2022-01-11 | 115 | 2021-12-29 | 2022-01-11 | 10d | 77d | 0d | Civil Engineer | 80h |
| 117 | 4.17.6 | Load Capacity verification |  | 10d | 2022-01-12 | 2022-01-25 | 116 | 2022-01-12 | 2022-01-25 | 10d | 77d | 0d | Steel Workers | 80h |
| 118 | 4.17.7 | Saftey measures of roof tracks |  | 20d | 2022-01-26 | 2022-02-22 | 117 | 2022-01-26 | 2022-02-22 | 20d | 77d | 0d | Civil Engineer; Inspections [0.1%]; Site Superintendent | 320h |
| 119 | 4.17.8 | Install roof tracks complete | milestone | 0d | 2022-02-22 | 2022-02-22 | 118 | 2022-02-22 | 2022-02-22 | 0d | 77d |  |  |  |
| 120 | 4.18 | **Install roof** |  | 90d | 2022-02-23 | 2022-06-29 | 103, 111 | 2022-02-23 | 2022-06-29 | 90d | 77d |  |  | 1120h |
| 121 | 4.18.1 | Preparation of roof substructure |  | 10d | 2022-02-23 | 2022-03-08 |  | 2022-02-23 | 2022-03-08 | 10d | 77d | 0d | Civil Engineer | 80h |
| 122 | 4.18.2 | Layout of roof panel |  | 15d | 2022-03-09 | 2022-03-29 | 121 | 2022-03-09 | 2022-03-29 | 15d | 77d | 0d | Civil Engineer | 120h |
| 123 | 4.18.3 | Cutting of roof panel |  | 15d | 2022-03-30 | 2022-04-19 | 122 | 2022-03-30 | 2022-04-19 | 15d | 77d | 0d | Steel Workers | 120h |
| 124 | 4.18.4 | Installation of roof panel |  | 10d | 2022-04-20 | 2022-05-03 | 123 | 2022-04-20 | 2022-05-03 | 10d | 77d | 0d | Steel Workers; Concrete Team | 160h |
| 125 | 4.18.5 | Hip Installation |  | 10d | 2022-05-04 | 2022-05-18 | 124 | 2022-05-04 | 2022-05-18 | 10d | 77d | 0d | Concrete Team; Steel Workers; Inspections [0.1%]; Demo Team | 240h |
| 126 | 4.18.6 | Roof Ventilation |  | 20d | 2022-05-19 | 2022-06-15 | 125 | 2022-05-19 | 2022-06-15 | 20d | 77d | 0d | Demo Team; Civil Engineer | 320h |
| 127 | 4.18.7 | Installation of gutter |  | 10d | 2022-06-16 | 2022-06-29 | 126 | 2022-06-16 | 2022-06-29 | 10d | 77d | 0d | Cleaners | 80h |
| 128 | 4.18.8 | Install roof complete | milestone | 0d | 2022-06-29 | 2022-06-29 | 127 | 2022-06-29 | 2022-06-29 | 0d | 77d |  |  |  |

| ID | WBS | Task | Type | Duration | Start | Finish | Predecessors | Baseline start | Baseline finish | Baseline duration | Total slack | Resources | Work | Cost | Baseline cost |
| --- | --- | --- | --- | --- | --- | --- | --- | --- | --- | --- | --- | --- | --- | --- | --- |
| 129 | 4.19 | **Inspection** |  | 39d | 2022-10-19 | 2022-12-12 | 42, 120, 60, 72, 87 | 2022-10-19 | 2022-12-12 | 39d | 0d | Inspections [0.1%] | 256h | 20,000 | 20,000 |
| 130 | 4.19.1 | Inspection Plan |  | 5d | 2022-10-19 | 2022-10-25 |  | 2022-10-19 | 2022-10-25 | 5d | 0d | Inspections [0.1%]; Site Superintendent | 40h |  |  |
| 131 | 4.19.2 | Saftey Inspection report |  | 8d | 2022-10-26 | 2022-11-04 | 130 | 2022-10-26 | 2022-11-04 | 8d | 0d | Security Team; Inspections [0.1%] | 64h |  |  |
| 132 | 4.19.3 | Evaluation of field |  | 7d | 2022-11-07 | 2022-11-15 | 131 | 2022-11-07 | 2022-11-15 | 7d | 0d | Inspections [0.1%] |  |  |  |
| 133 | 4.19.4 | Inspection of lightning system |  | 4d | 2022-11-16 | 2022-11-21 | 132 | 2022-11-16 | 2022-11-21 | 4d | 0d | Inspections [0.1%]; Site Superintendent | 32h |  |  |
| 134 | 4.19.5 | Assessment of seating |  | 3d | 2022-11-22 | 2022-11-24 | 133 | 2022-11-22 | 2022-11-24 | 3d | 0d | Inspections [0.1%]; Civil Engineer | 24h |  |  |
| 135 | 4.19.6 | Inspection of the electrical system |  | 2d | 2022-11-25 | 2022-11-28 | 134 | 2022-11-25 | 2022-11-28 | 2d | 0d | Civil Engineer; Inspections [0.1%] | 16h |  |  |
| 136 | 4.19.7 | Compliance verification |  | 10d | 2022-11-29 | 2022-12-12 | 135 | 2022-11-29 | 2022-12-12 | 10d | 0d | Site Superintendent; Inspections [0.1%] | 80h |  |  |
| 137 | 4.19.8 | Inspection complete | milestone | 0d | 2022-12-12 | 2022-12-12 | 136 | 2022-12-12 | 2022-12-12 | 0d | 0d |  |  |  |  |
