# Avignon Baseball stadium development

Schedule from MS Project, 2020-06-01 to 2022-12-06, costs in $.

## Calendars

- Standard: Mon-Fri 08:00-12:00, 13:00-17:00; Sat-Sun off. Exceptions (off unless hours are given): 2020-07-01 (Canada Day), 2020-09-07 (Labor Day), 2020-10-12 (Thanks Giving Day), 2020-12-25 (X'Mas), 2020-12-26 (Boxing Day), 2021-01-01 (New Year), 2021-05-17 (Victoria Day), 2021-07-01 (Canada Day), 2021-09-06 (Labor Day), 2021-10-11 (Thanks Giving Day), 2021-12-25 (X'Mas), 2021-12-26 (Boxing Day), 2022-01-01 (New Year), 2022-05-16 (Victoria Day), 2022-07-01 (Canada day), 2022-10-10 (Thanks Giving Day).

## Resources

| Resource | Unit | Rate | Cost per use |
| --- | --- | --- | --- |
| Site Superintendent |  | 49 |  |
| Security Team |  | 25 |  |
| Demo Team |  | 35 |  |
| Concrete Team |  | 35 |  |
| Steel Workers |  | 30 |  |
| Civil Engineers |  | 48 |  |
| Cleaners |  | 16.25 |  |
| Inspections |  |  |  |
| Human Resource Manager |  | 25 |  |
| Construction Project Specialist |  | 33.25 |  |
| Health and Saftey Officer |  | 35 |  |
| Diversity and Inclusion Coordintor |  | 45 |  |
| Workforce Planning Analyst |  | 36 |  |
| Project Manager |  | 46 |  |
| Electricians |  | 26 |  |
| Architect |  | 60 |  |
| General Labours |  | 20 |  |
| Performance Management Specialists |  | 32 |  |
| Machine Operator |  | 30 |  |
| Structural Engineer |  | 60 |  |
| Site Saftey Supervisor |  | 36 |  |
| Debris Removal Coordinator |  | 16.25 |  |
| Demolition Site Surveyor |  | 20 |  |
| Electrical Engineers |  | 45 |  |
| Lighting Designer |  | 30 |  |
| Installation Supervisior |  | 30 |  |
| Technology Integration Specialist |  | 20 |  |
| Roofing Project Manager |  | 30 |  |
| Roofing Engineer |  | 47 |  |
| Roofing Technician |  | 45 |  |
| Steel Fabrication Specialist |  | 30 |  |
| Infrastructure and Utilies Coordinator |  | 30 |  |
| Logistics and Supply Manager |  | 45 |  |
| Permitting and Regulatory Analyst |  | 45 |  |
| Landscaping and Exterior Design Consultant |  | 48 |  |
| Stadium Infrastructure Project Manager |  | 46 |  |
| Demolition Equipments | per day | 2000 | 60000 |
| Dump Trucks | per day | 500 | 10000 |
| Personal Protective Equipment (PPE) | unit | 125 | 10000 |
| Concrete Blocks and Bricks | sqare feet | 25 | 625000 |
| Steel Beams and Reinforcement Bars | unit | 600 | 25654 |
| Lumber and Plywood | unit | 126 | 89374 |
| Containment Barriers | unit | 60 | 3600 |
| Absorbent Materials | ton | 35.25 | 75000 |
| Concrete | cubic yards | 25.12 | 125000 |
| Formwork | unit | 65 | 30000 |
| Construction Joints and Sealants | unit | 16 | 6000 |
| Bull Floats | square feet | 270 | 75667.5 |
| Electrical Panels | unit | 208 | 115000 |
| Stadium Lights | unit | 160000 | 640000 |
| Lightning Controls | unit | 79.82 | 47892 |
| Concrete Mix | cubic yards | 10 | 65000 |
| Artificial Turf | square feet | 26 | 50255 |
| Mettalic Rods | ton | 50 | 55000 |
| Roof Sealants | unit | 81.47 | 285145 |
| Wooden or Metal roof trusses | unit | 85.45 | 21952 |
| Roofing Felt | square feet | 38.24 | 250000 |
| Insulation Boards | square feet | 56 | 282800 |
| Roofing Panels | unit | 39 | 19625 |
| Cranes or Lifts |  | 160 |  |
| Jumbotron Video Screen |  |  | 60000000 |
| Lawyer |  | 30 |  |

## Schedule

| ID | WBS | Task | Type | Duration | Start | Finish | Predecessors | Baseline start | Baseline finish | Baseline duration | Total slack | Free slack | Resources | Work | Cost | Baseline cost |
| --- | --- | --- | --- | --- | --- | --- | --- | --- | --- | --- | --- | --- | --- | --- | --- | --- |
| 1 | 1 | Harsh Rakeshkumar Bhatt | manual | 1d? | 2020-06-01 | 2020-06-01 |  | 2020-06-01 | 2020-06-01 | 1d? |  |  |  |  |  |  |
| 2 | 2 | 8879116 | manual | 1d? | 2020-06-01 | 2020-06-01 |  | 2020-06-01 | 2020-06-01 | 1d? |  |  |  |  |  |  |
| 4 | 3 | **Avignon Baseball Stadium Development** |  | 645d | 2020-06-01 | 2022-12-06 |  | 2020-06-01 | 2022-12-06 | 645d | 0d |  |  | 80824h | 536,301,477.23 | 536,269,577.23 |
| 5 | 3.1 | **Clear Stadium Site** |  | 70d | 2020-06-01 | 2020-09-08 |  | 2020-06-01 | 2020-09-08 | 70d | 1d | 0d |  | 3840h | 1,344,240 | 1,339,240 |
| 6 | 3.1.1 | Assessment of Site |  | 20d | 2020-06-01 | 2020-06-26 |  | 2020-06-01 | 2020-06-26 | 20d | 1d | 0d | Site Superintendent [300%]; Health and Saftey Officer; Infrastructure and Utilies Coordinator; Project Manager | 960h | 46,280 | 41,280 |
| 7 | 3.1.2 | Grading and Levelling |  | 15d | 2020-06-29 | 2020-07-20 | 6 | 2020-06-29 | 2020-07-20 | 15d | 1d | 0d | Site Superintendent [300%]; Cleaners [500%]; Structural Engineer; Dump Trucks [20 per day]; Cranes or Lifts; Demolition Equipments [20 per day] | 1200h | 173,790 | 173,790 |
| 8 | 3.1.3 | Sediment Control |  | 15d | 2020-07-21 | 2020-08-10 | 7 | 2020-07-21 | 2020-08-10 | 15d | 1d | 0d | Civil Engineers; Cleaners [400%]; Cranes or Lifts | 720h | 32,760 | 32,760 |
| 9 | 3.1.4 | Restoration of Site |  | 20d | 2020-08-11 | 2020-09-08 | 8 | 2020-08-11 | 2020-09-08 | 20d | 1d | 0d | Site Superintendent [400%]; Cranes or Lifts; Demolition Site Surveyor; Concrete Blocks and Bricks [16250 sqare feet] | 960h | 1,091,410 | 1,091,410 |
| 10 | 3.1.5 | Clear stadium site complete | milestone | 0d | 2020-09-08 | 2020-09-08 | 9 | 2020-09-08 | 2020-09-08 | 0d | 1d |  |  |  |  |  |
| 11 | 3.2 | **Demolish building** |  | 30d | 2020-09-09 | 2020-10-21 | 5 | 2020-09-09 | 2020-10-21 | 30d | 137d | 0d |  | 848h | 187,780 | 186,780 |
| 12 | 3.2.1 | Legitimate Permits |  | 10d | 2020-09-09 | 2020-09-22 |  | 2020-09-09 | 2020-09-22 | 10d | 137d | 0d | Lawyer | 80h | 3,400 | 2,400 |
| 13 | 3.2.2 | Demolition of structure |  | 10d | 2020-09-23 | 2020-10-06 | 12 | 2020-09-23 | 2020-10-06 | 10d | 137d | 0d | Debris Removal Coordinator; Demolition Equipments [20 per day]; Demolition Site Surveyor; Dump Trucks [20 per day]; General Labours; Site Saftey Supervisor; Site Superintendent | 400h | 131,300 | 131,300 |
| 14 | 3.2.3 | The site's safety and security |  | 6d | 2020-10-07 | 2020-10-15 | 13 | 2020-10-07 | 2020-10-15 | 6d | 137d | 0d | Security Team [600%]; Health and Saftey Officer; Inspections [0.1%]; Lawyer; Site Saftey Supervisor; Site Superintendent | 240h | 28,400 | 28,400 |
| 15 | 3.2.4 | Waste Management |  | 4d | 2020-10-16 | 2020-10-21 | 14 | 2020-10-16 | 2020-10-21 | 4d | 137d | 0d | Cleaners [1100%]; Dump Trucks [20 per day]; Site Saftey Supervisor; Site Superintendent [400%]; Logistics and Supply Manager | 128h | 24,680 | 24,680 |
| 16 | 3.2.5 | Demolish building complete | milestone | 0d | 2020-10-21 | 2020-10-21 | 15 | 2020-10-21 | 2020-10-21 | 0d | 137d |  |  |  |  |  |
| 17 | 3.3 | **Set up construction site** |  | 30d | 2020-10-22 | 2020-12-02 | 11 | 2020-10-22 | 2020-12-02 | 30d | 515d |  |  | 1120h | 4,949,759 | 4,937,759 |
| 18 | 3.3.1 | Temporary Fencing and Signage |  | 5d | 2020-10-22 | 2020-10-28 |  | 2020-10-22 | 2020-10-28 | 5d | 515d | 0d | Security Team [1000%]; Artificial Turf [50254 square feet]; Concrete [35625 cubic yards]; Site Superintendent [300%]; Stadium Infrastructure Project Manager; Concrete Blocks and Bricks [68454 sqare feet] | 120h | 4,717,909 | 4,717,909 |
| 19 | 3.3.2 | Installation of temporary utilities |  | 10d | 2020-10-29 | 2020-11-11 | 18 | 2020-10-29 | 2020-11-11 | 10d | 515d | 0d | Installation Supervisior; Project Manager | 160h | 6,080 | 6,080 |
| 20 | 3.3.3 | Construction office |  | 10d | 2020-11-12 | 2020-11-25 | 19 | 2020-11-12 | 2020-11-25 | 10d | 515d | 0d | Security Team [500%]; Site Superintendent [400%]; Civil Engineers [300%]; Human Resource Manager [50%]; Installation Supervisior [200%]; Logistics and Supply Manager; Project Manager; Structural Engineer; Technology Integration Specialist; Workforce Planning Analyst | 760h | 29,720 | 29,720 |
| 21 | 3.3.4 | Material Storage |  | 5d | 2020-11-26 | 2020-12-02 | 20 | 2020-11-26 | 2020-12-02 | 5d | 515d | 0d | Concrete Team [600%]; Logistics and Supply Manager; Lumber and Plywood [726 unit] | 80h | 196,050 | 184,050 |
| 22 | 3.3.5 | Set up construction site complete | milestone | 0d | 2020-12-02 | 2020-12-02 | 21 | 2020-12-02 | 2020-12-02 | 0d | 515d |  |  |  |  |  |
| 23 | 3.4 | **Drive support piling** |  | 111d | 2020-09-09 | 2021-02-15 | 5 | 2020-09-09 | 2021-02-15 | 111d | 1d | 0d |  | 3560h | 35,749,269 | 35,748,869 |
| 24 | 3.4.1 | Temporary Fensing |  | 30d | 2020-09-09 | 2020-10-21 |  | 2020-09-09 | 2020-10-21 | 30d | 1d | 0d | Cleaners [800%]; Concrete Blocks and Bricks [68545 sqare feet]; General Labours [160%]; Health and Saftey Officer; Installation Supervisior [200%]; Steel Beams and Reinforcement Bars [625 unit]; Steel Fabrication Specialist; Bull Floats [25656 square feet] | 1200h | 9,773,566.5 | 9,773,566.5 |
| 25 | 3.4.2 | Utilities |  | 60d | 2020-10-22 | 2021-01-15 | 24 | 2020-10-22 | 2021-01-15 | 60d | 1d | 0d | Demo Team [200%]; Inspections [0.1%]; Installation Supervisior; Lumber and Plywood [726 unit]; Concrete Blocks and Bricks [68545 sqare feet]; Bull Floats [25656 square feet] | 960h | 9,573,462.5 | 9,573,462.5 |
| 26 | 3.4.3 | Pilling |  | 20d | 2021-01-18 | 2021-02-12 | 25 | 2021-01-18 | 2021-02-12 | 20d | 1d | 0d | Civil Engineers; Site Superintendent; Architect; Project Manager; Technology Integration Specialist; Workforce Planning Analyst; Electrical Engineers; Installation Supervisior; Bull Floats [25656 square feet] | 1280h | 7,056,227.5 | 7,056,227.5 |
| 27 | 3.4.4 | Pilling Storage |  | 1d | 2021-02-15 | 2021-02-15 | 26 | 2021-02-15 | 2021-02-15 | 1d | 1d | 0d | Concrete Team [1500%]; Concrete Blocks and Bricks [68545 sqare feet]; Bull Floats [25656 square feet] | 120h | 9,346,012.5 | 9,345,612.5 |
| 28 | 3.4.5 | Drive support pilling complete | milestone | 0d | 2021-02-15 | 2021-02-15 | 27 | 2021-02-15 | 2021-02-15 | 0d | 1d |  |  |  |  |  |

Notes:
- 6: $5000 is the inclusive cost of Environmental Site Assessment and Hydrological Site Assessment.
- 12: $1000 for the Legitimate Permits from the Government Sector.
- 21: $12,000 is the rent ($0.80 per sq. ft.)of the warehouse.
- 27: $400 For the one day of Storage.

| ID | WBS | Task | Type | Duration | Start | Finish | Predecessors | Baseline start | Baseline finish | Baseline duration | Total slack | Free slack | Resources | Work | Cost | Baseline cost |
| --- | --- | --- | --- | --- | --- | --- | --- | --- | --- | --- | --- | --- | --- | --- | --- | --- |
| 29 | 3.5 | **Pour lower concrete bowl** |  | 55d | 2021-02-16 | 2021-05-03 | 23 | 2021-02-16 | 2021-05-03 | 55d | 1d | 0d |  | 2360h | 23,380,334 | 23,380,334 |
| 30 | 3.5.1 | Preparation of Formwork |  | 10d | 2021-02-16 | 2021-03-01 |  | 2021-02-16 | 2021-03-01 | 10d | 1d | 0d | Bull Floats [25656 square feet]; Formwork [254 unit]; Installation Supervisior; Security Team | 160h | 7,053,697.5 | 7,053,697.5 |
| 31 | 3.5.2 | Concrete Mixing |  | 10d | 2021-03-02 | 2021-03-15 | 30 | 2021-03-02 | 2021-03-15 | 10d | 1d | 0d | Concrete Team [600%]; Site Superintendent [300%]; Concrete [35625 cubic yards]; Concrete Mix [38254 cubic yards]; Inspections [0.1%]; Insulation Boards [2654 square feet]; Machine Operator; Mettalic Rods [500 ton]; Personal Protective Equipment (PPE) [100 unit]; Infrastructure and Utilies Coordinator; Bull Floats [25656 square feet] | 880h | 9,057,511.5 | 9,057,511.5 |
| 32 | 3.5.3 | Install Reinforcement |  | 15d | 2021-03-16 | 2021-04-05 | 31 | 2021-03-16 | 2021-04-05 | 15d | 1d | 0d | Site Superintendent [700%]; Installation Supervisior [300%]; Logistics and Supply Manager; Demolition Equipments [20 per day]; Dump Trucks [20 per day]; Bull Floats [1 square feet]; Inspections [0.1%] | 360h | 230,817.5 | 230,817.5 |
| 33 | 3.5.4 | Formwork removal |  | 20d | 2021-04-06 | 2021-05-03 | 32 | 2021-04-06 | 2021-05-03 | 20d | 1d | 0d | Site Superintendent; General Labours; Infrastructure and Utilies Coordinator; Installation Supervisior; Landscaping and Exterior Design Consultant; Logistics and Supply Manager; Bull Floats [25656 square feet] | 960h | 7,038,307.5 | 7,038,307.5 |
| 34 | 3.5.5 | Pour lower concrete bowl complete | milestone | 0d | 2021-05-03 | 2021-05-03 | 33 | 2021-05-03 | 2021-05-03 | 0d | 1d |  |  |  |  |  |
| 35 | 3.6 | **Pour main concourse** |  | 120d | 2021-05-04 | 2021-10-22 | 11, 29 | 2021-05-04 | 2021-10-22 | 120d | 1d | 0d |  | 4880h | 62,003,970 | 61,993,970 |
| 36 | 3.6.1 | Installation of Formwork |  | 30d | 2021-05-04 | 2021-06-15 |  | 2021-05-04 | 2021-06-15 | 30d | 1d | 0d | Site Superintendent [700%]; Formwork [254 unit]; General Labours [1000%]; Inspections [0.1%]; Installation Supervisior; Insulation Boards [2654 square feet] | 2880h | 564,894 | 564,894 |
| 37 | 3.6.2 | Concrete pouring |  | 4d | 2021-06-16 | 2021-07-14 | 36 | 2021-06-16 | 2021-07-14 | 4d | 1d | 0d | Concrete Team [500%]; General Labours [1000%]; Inspections [0.1%] | 320h | 28,800 | 28,800 |
| 38 | 3.6.3 | Concrete delivery |  | 60d | 2021-07-15 | 2021-10-07 | 37 | 2021-07-15 | 2021-10-07 | 60d | 1d | 0d | Concrete Team; Logistics and Supply Manager; Concrete Blocks and Bricks [1 sqare feet]; Jumbotron Video Screen; Machine Operator | 1440h | 60,677,825 | 60,677,825 |
| 39 | 3.6.4 | Protection |  | 10d | 2021-10-08 | 2021-10-22 | 38 | 2021-10-08 | 2021-10-22 | 10d | 1d | 0d | Security Team; Inspections [0.1%]; General Labours [500%]; Concrete Blocks and Bricks [1 sqare feet]; Concrete Mix [1 cubic yards]; Concrete Team; Construction Joints and Sealants [1 unit] | 240h | 732,451 | 722,451 |
| 40 | 3.6.5 | Pour main concourse complete | milestone | 0d | 2021-10-22 | 2021-10-22 | 39 | 2021-10-22 | 2021-10-22 | 0d | 1d |  |  |  |  |  |
| 41 | 3.7 | **Install playing field** |  | 60d | 2021-05-04 | 2021-07-28 | 11, 29 | 2021-05-04 | 2021-07-28 | 60d | 310d |  |  | 9636h | 69,004,524 | 69,004,524 |
| 42 | 3.7.1 | Preparation of Field |  | 25d | 2021-05-04 | 2021-06-08 |  | 2021-05-04 | 2021-06-08 | 25d | 310d | 0d | Site Superintendent [700%]; Stadium Infrastructure Project Manager; General Labours; Artificial Turf [1 square feet]; Concrete Mix [1 cubic yards]; Concrete Team; Construction Joints and Sealants [1 unit]; Construction Project Specialist; Electrical Panels [1 unit]; Electricians; Bull Floats [1 square feet]; Civil Engineers; Cleaners; Health and Saftey Officer; Human Resource Manager [50%]; Installation Supervisior; Insulation Boards [1 square feet]; Jumbotron Video Screen; Security Team; Site Saftey Supervisor; Steel Beams and Reinforcement Bars [1 unit]; Steel Fabrication Specialist | 2700h | 60,709,962.5 | 60,709,962.5 |
| 43 | 3.7.2 | Install Irrigation System |  | 20d | 2021-06-09 | 2021-07-07 | 42 | 2021-06-09 | 2021-07-07 | 20d | 310d | 0d | Concrete Team; Demo Team; Installation Supervisior [200%]; Insulation Boards [2654 square feet]; Landscaping and Exterior Design Consultant; Machine Operator; Site Saftey Supervisor [200%]; Site Superintendent [700%]; Steel Workers [1000%]; Structural Engineer [300%]; Technology Integration Specialist; General Labours [2000%] | 4800h | 555,104 | 555,104 |
| 44 | 3.7.3 | Install drainage System |  | 4d | 2021-07-08 | 2021-07-13 | 43 | 2021-07-08 | 2021-07-13 | 4d | 310d | 0d | Site Superintendent [500%]; General Labours [1500%]; Bull Floats [25656 square feet]; Concrete Blocks and Bricks [1 sqare feet]; Concrete Team [200%]; Construction Joints and Sealants [1 unit]; Construction Project Specialist; Containment Barriers [5 unit]; Cranes or Lifts; Formwork [1 unit] | 288h | 7,683,577.5 | 7,683,577.5 |
| 45 | 3.7.4 | Grass Installation |  | 11d | 2021-07-14 | 2021-07-28 | 44 | 2021-07-14 | 2021-07-28 | 11d | 310d | 0d | Steel Workers [2000%]; Concrete Team | 1848h | 55,880 | 55,880 |
| 46 | 3.7.5 | Install playing field complete | milestone | 0d | 2021-07-28 | 2021-07-28 | 45 | 2021-07-28 | 2021-07-28 | 0d | 310d |  |  |  |  |  |
| 47 | 3.8 | **Construct upper steel bowl** |  | 22d | 2021-05-03 | 2021-06-03 | 11, 29 | 2021-05-03 | 2021-06-03 | 22d | 99d | 98d |  | 2248h | 9,259,002.41 | 9,259,002.41 |
| 48 | 3.8.1 | Design of steel bowl |  | 3d | 2021-05-04 | 2021-05-06 |  | 2021-05-04 | 2021-05-06 | 3d | 99d | 0d | Steel Workers [1000%]; Absorbent Materials [100 ton]; Architect; Artificial Turf [50254 square feet]; Bull Floats [25656 square feet]; Civil Engineers; Concrete Mix [38254 cubic yards]; Concrete Team [200%]; Construction Joints and Sealants [3 unit]; Construction Project Specialist; Cranes or Lifts; Demo Team; Dump Trucks [15 per day]; General Labours; Installation Supervisior; Landscaping and Exterior Design Consultant; Lightning Controls [3 unit]; Lumber and Plywood [1 unit]; Mettalic Rods [1 ton]; Project Manager; Steel Beams and Reinforcement Bars [1 unit]; Steel Fabrication Specialist; Structural Engineer; Wooden or Metal roof trusses [1 unit]; Inspections [0.1%] | 552h | 9,192,798.41 | 9,192,798.41 |
| 49 | 3.8.2 | Assembly of steel bowl |  | 3d | 2021-05-07 | 2021-05-11 | 48 | 2021-05-07 | 2021-05-11 | 3d | 99d | 0d | Steel Workers [1000%]; Cleaners [1500%] | 480h | 11,100 | 11,100 |
| 50 | 3.8.3 | Welding of steel bowl |  | 16d | 2021-05-12 | 2021-06-03 | 49 | 2021-05-12 | 2021-06-03 | 16d | 99d |  | Concrete Team [1500%]; Site Superintendent [700%] | 1216h | 55,104 | 55,104 |
| 51 | 3.8.4 | Construct upper steel bowl complete | milestone | 0d | 2021-05-03 | 2021-05-03 |  | 2021-05-03 | 2021-05-03 | 0d | 121d |  |  |  |  |  |
| 52 | 3.9 | **Install seats** |  | 145d | 2021-10-25 | 2022-05-13 | 35, 47 | 2021-10-25 | 2022-05-13 | 145d | 0d |  |  | 10448h | 1,983,867 | 1,983,867 |
| 53 | 3.9.1 | Layout of seat and design |  | 40d | 2021-10-25 | 2021-12-17 |  | 2021-10-25 | 2021-12-17 | 40d | 1d | 0d | Site Superintendent [500%]; Construction Joints and Sealants [5 unit]; Construction Project Specialist [200%]; Containment Barriers [1 unit]; General Labours; Health and Saftey Officer; Human Resource Manager [50%]; Infrastructure and Utilies Coordinator; Inspections [0.1%]; Installation Supervisior; Insulation Boards [2654 square feet] | 3680h | 581,644 | 581,644 |
| 54 | 3.9.2 | Planning of seat installation |  | 50d | 2021-12-20 | 2022-02-25 | 53 | 2021-12-20 | 2022-02-25 | 50d | 1d | 0d | Civil Engineers; Site Superintendent; Steel Workers; General Labours [200%]; Health and Saftey Officer; Infrastructure and Utilies Coordinator; Inspections [0.1%]; Insulation Boards [1 square feet]; Landscaping and Exterior Design Consultant; Lighting Designer | 3600h | 406,856 | 406,856 |
| 55 | 3.9.3 | Seat accessories |  | 30d | 2022-02-28 | 2022-04-08 | 54 | 2022-02-28 | 2022-04-08 | 30d | 1d | 0d | Site Superintendent; Architect; Civil Engineers [200%]; Construction Joints and Sealants [1 unit]; Debris Removal Coordinator; Infrastructure and Utilies Coordinator; Inspections [0.1%]; Installation Supervisior; Insulation Boards [1 square feet]; Mettalic Rods [1 ton]; Personal Protective Equipment (PPE) [1 unit]; Demo Team; Demolition Equipments [1 per day]; Demolition Site Surveyor | 2160h | 496,747 | 496,747 |
| 56 | 3.9.4 | Quality of seats |  | 23d | 2022-04-11 | 2022-05-13 | 55 | 2022-04-11 | 2022-05-13 | 23d | 0d |  | Civil Engineers; Architect; Infrastructure and Utilies Coordinator; Inspections [0.1%]; Installation Supervisior; General Labours; Concrete Mix [38254 cubic yards]; Concrete Team; Construction Joints and Sealants [500 unit] | 1008h | 498,620 | 498,620 |
| 57 | 3.9.5 | Install seats complete | milestone | 0d | 2022-05-13 | 2022-05-13 | 56 | 2022-05-13 | 2022-05-13 | 0d | 0d |  |  |  |  |  |

Notes:
- 39: $10,000 For the Protection Equipments

| ID | WBS | Task | Type | Duration | Start | Finish | Predecessors | Baseline start | Baseline finish | Baseline duration | Total slack | Free slack | Resources | Work | Cost | Baseline cost |
| --- | --- | --- | --- | --- | --- | --- | --- | --- | --- | --- | --- | --- | --- | --- | --- | --- |
| 58 | 3.10 | **Build luxury boxes** |  | 90d | 2021-10-25 | 2022-02-25 | 35, 47 | 2021-10-25 | 2022-02-25 | 90d | 160d |  |  | 8080h | 63,434,270.57 | 63,434,270.57 |
| 59 | 3.10.1 | Planning of luxury box |  | 30d | 2021-10-25 | 2021-12-03 |  | 2021-10-25 | 2021-12-03 | 30d | 160d | 0d | Civil Engineers; Architect; Artificial Turf [1 square feet]; Bull Floats [1 square feet]; Cleaners; Concrete [1 cubic yards]; Concrete Blocks and Bricks [1 sqare feet]; Concrete Mix [1 cubic yards]; Concrete Team; Containment Barriers [1 unit]; Debris Removal Coordinator; Demo Team; Dump Trucks [1 per day]; Electrical Engineers; Electrical Panels [1 unit]; Electricians; Lighting Designer; Lightning Controls [1 unit]; Logistics and Supply Manager; Lumber and Plywood [1 unit]; Machine Operator; Roofing Engineer; Site Saftey Supervisor; Site Superintendent; Stadium Infrastructure Project Manager; Stadium Lights [1 unit]; Steel Beams and Reinforcement Bars [1 unit]; Steel Fabrication Specialist; Steel Workers; Structural Engineer | 4320h | 2,198,652.44 | 2,198,652.44 |
| 60 | 3.10.2 | Fabrication of materials |  | 20d | 2021-12-06 | 2021-12-31 | 59 | 2021-12-06 | 2021-12-31 | 20d | 160d | 0d | Civil Engineers [21.1%]; Site Superintendent [21.1%]; Formwork [1 unit]; General Labours [21.1%]; Health and Saftey Officer [21.1%]; Human Resource Manager [10.5%]; Infrastructure and Utilies Coordinator [21.1%]; Inspections [0.1%]; Installation Supervisior [21.1%]; Insulation Boards [1 square feet]; Mettalic Rods [1 ton]; Performance Management Specialists [21.1%]; Permitting and Regulatory Analyst [21.1%]; Structural Engineer [21.1%] | 320h | 380,147.84 | 380,147.84 |
| 61 | 3.10.3 | Installation of HVAC |  | 20d | 2022-01-03 | 2022-01-28 | 60 | 2022-01-03 | 2022-01-28 | 20d | 160d | 0d | Civil Engineers; Site Superintendent; Concrete Team; Construction Joints and Sealants [1 unit]; Construction Project Specialist; Containment Barriers [1 unit]; Debris Removal Coordinator; Demolition Site Surveyor; Dump Trucks [1 per day]; Electricians; Formwork [1 unit]; General Labours; Human Resource Manager [50%]; Infrastructure and Utilies Coordinator; Installation Supervisior; Insulation Boards [1 square feet]; Jumbotron Video Screen; Landscaping and Exterior Design Consultant; Lawyer | 2000h | 60,396,777 | 60,396,777 |
| 62 | 3.10.4 | Technology Integration |  | 20d | 2022-01-31 | 2022-02-25 | 61 | 2022-01-31 | 2022-02-25 | 20d | 160d | 0d | Civil Engineers; Concrete Team; Site Superintendent; Lighting Designer; Lightning Controls [1 unit]; Logistics and Supply Manager; Mettalic Rods [1 ton]; Performance Management Specialists; Permitting and Regulatory Analyst; Personal Protective Equipment (PPE) [1 unit]; Project Manager; Roof Sealants [1 unit]; Roofing Engineer | 1440h | 458,693.29 | 458,693.29 |
| 63 | 3.10.5 | Build luxury boxes complete | milestone | 0d | 2022-02-25 | 2022-02-25 | 62 | 2022-02-25 | 2022-02-25 | 0d | 160d | 0d |  |  |  |  |
| 64 | 3.11 | **Install electronic scoreboards** |  | 30d | 2022-02-28 | 2022-04-08 | 35, 47 | 2022-02-28 | 2022-04-08 | 30d | 169d |  | Jumbotron Video Screen | 1200h | 128,321,523.14 | 128,320,623.14 |
| 65 | 3.11.1 | Scoreboard mounting |  | 5d | 2022-02-28 | 2022-03-04 | 63 | 2022-02-28 | 2022-03-04 | 5d | 169d | 0d | Demo Team; Steel Workers; Bull Floats [25656 square feet]; Civil Engineers; Concrete Mix [38254 cubic yards]; Concrete Team; Construction Joints and Sealants [5 unit]; Jumbotron Video Screen; Landscaping and Exterior Design Consultant; Lawyer; Lighting Designer; Logistics and Supply Manager; Lumber and Plywood [1 unit]; Machine Operator; Performance Management Specialists; Permitting and Regulatory Analyst; Personal Protective Equipment (PPE) [10 unit]; Project Manager; Roofing Engineer | 520h | 67,577,197.5 | 67,577,197.5 |
| 66 | 3.11.2 | Installation and design of an electrical system |  | 5d | 2022-03-07 | 2022-03-11 | 65 | 2022-03-07 | 2022-03-11 | 5d | 169d | 0d | Civil Engineers; Inspections [0.1%]; Installation Supervisior; Insulation Boards [1 square feet]; Lighting Designer; Lightning Controls [1 unit] | 120h | 335,147.82 | 335,147.82 |
| 67 | 3.11.3 | Testing of scoreboard |  | 10d | 2022-03-14 | 2022-03-25 | 66 | 2022-03-14 | 2022-03-25 | 10d | 169d | 0d | Civil Engineers; Inspections [0.1%]; Installation Supervisior; Insulation Boards [1 square feet]; Lighting Designer; Lightning Controls [1 unit]; Logistics and Supply Manager; Machine Operator; Mettalic Rods [1 ton] | 400h | 400,517.82 | 400,517.82 |
| 68 | 3.11.4 | User training and its documentation |  | 10d | 2022-03-28 | 2022-04-08 | 67 | 2022-03-28 | 2022-04-08 | 10d | 169d | 0d | Civil Engineers; Site Superintendent; Inspections [0.1%] | 160h | 8,660 | 7,760 |
| 69 | 3.11.5 | Install electronic scoreboards complete | milestone | 0d | 2022-04-08 | 2022-04-08 | 68 | 2022-04-08 | 2022-04-08 | 0d | 169d |  |  |  |  |  |
| 70 | 3.12 | **Stadium Infrastructure** |  | 120d | 2021-10-25 | 2022-04-08 | 35, 47 | 2021-10-25 | 2022-04-08 | 120d | 130d |  |  | 4440h | 60,809,820 | 60,809,820 |
| 71 | 3.12.1 | Assessment of infrastructure planning |  | 30d | 2021-10-25 | 2021-12-03 |  | 2021-10-25 | 2021-12-03 | 30d | 130d | 0d | Concrete Team [400%]; Containment Barriers [1 unit]; Demolition Equipments [20 per day]; Electrical Engineers; Health and Saftey Officer; Inspections [0.1%]; Insulation Boards [2565 square feet] | 1440h | 582,900 | 582,900 |
| 72 | 3.12.2 | Sanitary system |  | 20d | 2021-12-06 | 2021-12-31 | 71 | 2021-12-06 | 2021-12-31 | 20d | 130d | 0d | Civil Engineers; Cleaners; Demo Team; Containment Barriers [5 unit]; Electrical Panels [5 unit]; Jumbotron Video Screen | 480h | 60,135,820 | 60,135,820 |
| 73 | 3.12.3 | Network system |  | 10d | 2022-01-03 | 2022-01-14 | 72 | 2022-01-03 | 2022-01-14 | 10d | 130d | 0d | Steel Workers; Architect; Civil Engineers; Concrete Team; Construction Project Specialist; Demo Team; Electricians; General Labours; Human Resource Manager [50%]; Infrastructure and Utilies Coordinator; Installation Supervisior; Lawyer; Machine Operator; Performance Management Specialists; Permitting and Regulatory Analyst; Project Manager; Roofing Engineer | 1320h | 47,180 | 47,180 |
| 74 | 3.12.4 | Saftey Equipment |  | 30d | 2022-01-17 | 2022-02-25 | 73 | 2022-01-17 | 2022-02-25 | 30d | 130d | 0d | Security Team; Site Saftey Supervisor; Site Superintendent | 720h | 26,400 | 26,400 |
| 75 | 3.12.5 | Signage |  | 30d | 2022-02-28 | 2022-04-08 | 74 | 2022-02-28 | 2022-04-08 | 30d | 130d | 0d | Civil Engineers; Security Team | 480h | 17,520 | 17,520 |
| 76 | 3.12.6 | Stadium Infrastructure complete | milestone | 0d | 2022-04-08 | 2022-04-08 | 75 | 2022-04-08 | 2022-04-08 | 0d | 130d |  |  |  |  |  |
| 77 | 3.13 | **Construct steel canopy** |  | 75d | 2022-05-17 | 2022-08-30 | 52 | 2022-05-17 | 2022-08-30 | 75d | 0d |  |  | 2740h | 60,485,066 | 60,485,066 |
| 78 | 3.13.1 | Canopy Engineering |  | 20d | 2022-05-17 | 2022-06-13 |  | 2022-05-17 | 2022-06-13 | 20d | 0d |  | Civil Engineers; Concrete Team; Insulation Boards [1 square feet]; Jumbotron Video Screen | 320h | 60,296,136 | 60,296,136 |
| 79 | 3.13.2 | steel materials |  | 15d | 2022-06-14 | 2022-07-05 | 78 | 2022-06-14 | 2022-07-05 | 15d | 0d |  | Civil Engineers; Site Superintendent; Steel Workers [200%]; Human Resource Manager [50%]; Infrastructure and Utilies Coordinator; Inspections [0.1%] | 660h | 43,940 | 43,940 |
| 80 | 3.13.3 | steel fabrication |  | 15d | 2022-07-06 | 2022-07-26 | 79 | 2022-07-06 | 2022-07-26 | 15d | 0d |  | Steel Workers; Debris Removal Coordinator; General Labours; Machine Operator | 480h | 11,550 | 11,550 |
| 81 | 3.13.4 | Erection |  | 10d | 2022-07-27 | 2022-08-09 | 80 | 2022-07-27 | 2022-08-09 | 10d | 0d |  | Steel Workers; Concrete Team [200%]; Electricians [400%]; General Labours [600%] | 1040h | 25,920 | 25,920 |
| 82 | 3.13.5 | Aesthetic Enhancement |  | 10d | 2022-08-10 | 2022-08-23 | 81 | 2022-08-10 | 2022-08-23 | 10d | 0d |  | Demo Team; Demolition Equipments [20 per day]; Demolition Site Surveyor | 160h | 104,400 | 104,400 |
| 83 | 3.13.6 | Weatherproofing |  | 5d | 2022-08-24 | 2022-08-30 | 82 | 2022-08-24 | 2022-08-30 | 5d | 0d |  | Steel Workers; Landscaping and Exterior Design Consultant | 80h | 3,120 | 3,120 |
| 84 | 3.13.7 | Construct steel canopy complete | milestone | 0d | 2022-08-30 | 2022-08-30 | 83 | 2022-08-30 | 2022-08-30 | 0d | 0d |  |  |  |  |  |

Notes:
- 68: $900 For the documentation charges

| ID | WBS | Task | Type | Duration | Start | Finish | Predecessors | Baseline start | Baseline finish | Baseline duration | Total slack | Free slack | Resources | Work | Cost | Baseline cost |
| --- | --- | --- | --- | --- | --- | --- | --- | --- | --- | --- | --- | --- | --- | --- | --- | --- |
| 85 | 3.14 | **Light Installation** |  | 30d | 2022-08-31 | 2022-10-12 | 77 | 2022-08-31 | 2022-10-12 | 30d | 0d |  |  | 1240h | 1,201,947.82 | 1,201,947.82 |
| 86 | 3.14.1 | Design of lightning |  | 10d | 2022-08-31 | 2022-09-13 |  | 2022-08-31 | 2022-09-13 | 10d | 0d |  | Civil Engineers; Electrical Engineers | 160h | 7,440 | 7,440 |
| 87 | 3.14.2 | Electric Infrastructure |  | 5d | 2022-09-14 | 2022-09-20 | 86 | 2022-09-14 | 2022-09-20 | 5d | 0d |  | Security Team; Lighting Designer; Lightning Controls [1 unit]; Logistics and Supply Manager; Mettalic Rods [1 ton]; Performance Management Specialists; Site Saftey Supervisor; Site Superintendent; Stadium Infrastructure Project Manager; Stadium Lights [1 unit]; Steel Beams and Reinforcement Bars [1 unit] | 280h | 939,795.82 | 939,795.82 |
| 88 | 3.14.3 | Installation of lightning Fixture |  | 5d | 2022-09-21 | 2022-09-27 | 87 | 2022-09-21 | 2022-09-27 | 5d | 0d |  | Security Team [500%]; Electrical Engineers [200%]; Electrical Panels [5 unit]; Electricians [200%]; General Labours [400%] | 520h | 129,920 | 129,920 |
| 89 | 3.14.4 | Lightning control |  | 5d | 2022-09-28 | 2022-10-04 | 88 | 2022-09-28 | 2022-10-04 | 5d | 0d |  | Steel Workers; Electrical Engineers; Electrical Panels [1 unit]; Electricians; Infrastructure and Utilies Coordinator; Installation Supervisior; Lighting Designer | 240h | 122,848 | 122,848 |
| 90 | 3.14.5 | Testing |  | 3d | 2022-10-05 | 2022-10-07 | 89 | 2022-10-05 | 2022-10-07 | 3d | 0d |  | Site Superintendent | 24h | 1,176 | 1,176 |
| 91 | 3.14.6 | Procurement of lightning fixture |  | 2d | 2022-10-11 | 2022-10-12 | 90 | 2022-10-11 | 2022-10-12 | 2d | 0d |  | Civil Engineers | 16h | 768 | 768 |
| 92 | 3.14.7 | Light Installation complete | milestone | 0d | 2022-10-12 | 2022-10-12 | 91 | 2022-10-12 | 2022-10-12 | 0d | 0d |  |  |  |  |  |
| 93 | 3.15 | **Build roof supports** |  | 60d | 2021-05-04 | 2021-07-28 | 29 | 2021-05-04 | 2021-07-28 | 60d | 82d | 0d |  | 8720h | 11,777,862.74 | 11,776,462.74 |
| 94 | 3.15.1 | Design of roofs |  | 20d | 2021-05-04 | 2021-06-01 |  | 2021-05-04 | 2021-06-01 | 20d | 92d | 10d | Civil Engineers [300%]; General Labours [1200%]; Inspections [0.1%]; Installation Supervisior [200%]; Project Manager; Roof Sealants [8 unit]; Roofing Engineer; Roofing Felt [2552 square feet]; Roofing Panels [5 unit]; Roofing Project Manager; Roofing Technician; Security Team [500%]; Site Saftey Supervisor; Site Superintendent [700%] | 5440h | 831,765.24 | 831,765.24 |
| 95 | 3.15.2 | Structural Engineering |  | 30d | 2021-05-04 | 2021-06-15 | 94FF | 2021-05-04 | 2021-06-15 | 30d | 82d | 0d | Civil Engineers; General Labours; Infrastructure and Utilies Coordinator; Roofing Engineer; Site Saftey Supervisor; Site Superintendent; Structural Engineer | 1680h | 69,600 | 69,600 |
| 96 | 3.15.3 | Pre-assembly |  | 10d | 2021-06-16 | 2021-06-29 | 95 | 2021-06-16 | 2021-06-29 | 10d | 82d | 0d | Concrete Team [300%]; Bull Floats [25656 square feet]; Civil Engineers [300%]; Cleaners [1200%]; Concrete [35625 cubic yards]; Concrete Blocks and Bricks [68526 sqare feet]; Concrete Mix [38254 cubic yards]; Construction Joints and Sealants [5 unit] | 1440h | 10,849,977.5 | 10,849,977.5 |
| 97 | 3.15.4 | Saftey Inspection |  | 20d | 2021-06-30 | 2021-07-28 | 96 | 2021-06-30 | 2021-07-28 | 20d | 82d | 0d | Inspections [0.1%] |  | 20,000 | 20,000 |
| 98 | 3.15.5 | Procurement of material |  | 5d | 2021-06-30 | 2021-07-07 | 97SS | 2021-06-30 | 2021-07-07 | 5d | 92d | 0d | Concrete Team; Logistics and Supply Manager | 80h | 3,200 | 3,200 |
| 99 | 3.15.6 | Finalization and Integration |  | 5d | 2021-07-08 | 2021-07-14 | 98 | 2021-07-08 | 2021-07-14 | 5d | 92d | 0d | Civil Engineers; Demo Team | 80h | 3,320 | 1,920 |
| 100 | 3.15.7 | Build roof supports complete | milestone | 0d | 2021-07-14 | 2021-07-14 | 99 | 2021-07-14 | 2021-07-14 | 0d | 92d | 10d |  |  |  |  |
| 101 | 3.16 | **Construct roof** |  | 48d | 2021-07-29 | 2021-10-05 | 93 | 2021-07-29 | 2021-10-05 | 48d | 82d |  |  | 3040h | 811,672.83 | 810,472.83 |
| 102 | 3.16.1 | Design of roof and Engineering |  | 5d | 2021-07-29 | 2021-08-04 | 100 | 2021-07-29 | 2021-08-04 | 5d | 82d | 0d | Civil Engineers; Landscaping and Exterior Design Consultant; Roof Sealants [5 unit]; Roofing Felt [2552 square feet]; Roofing Panels [5 unit]; Roofing Project Manager; Roofing Technician | 160h | 659,800.83 | 659,800.83 |
| 103 | 3.16.2 | Materials for roofs |  | 5d | 2021-08-05 | 2021-08-11 | 102 | 2021-08-05 | 2021-08-11 | 5d | 82d | 0d | Civil Engineers [300%]; Site Superintendent [500%]; Steel Workers [500%] | 520h | 21,560 | 21,560 |
| 104 | 3.16.3 | Construction of roof |  | 15d | 2021-08-12 | 2021-09-01 | 103 | 2021-08-12 | 2021-09-01 | 15d | 82d | 0d | Civil Engineers [300%]; Site Saftey Supervisor; Site Superintendent [500%]; Stadium Infrastructure Project Manager; Structural Engineer | 1320h | 63,720 | 63,720 |
| 105 | 3.16.4 | Roof membrane |  | 10d | 2021-09-02 | 2021-09-16 | 104 | 2021-09-02 | 2021-09-16 | 10d | 82d | 0d | Civil Engineers [300%]; Roofing Project Manager; Site Saftey Supervisor; Site Superintendent [500%]; Stadium Infrastructure Project Manager | 400h | 16,720 | 16,720 |
| 106 | 3.16.5 | Roof ventilation system |  | 8d | 2021-09-17 | 2021-09-28 | 105 | 2021-09-17 | 2021-09-28 | 8d | 82d | 0d | Concrete Team [300%]; Site Superintendent [700%] | 640h | 28,672 | 28,672 |
| 107 | 3.16.6 | Inspection of final roof and certificate |  | 5d | 2021-09-29 | 2021-10-05 | 106 | 2021-09-29 | 2021-10-05 | 5d | 82d | 0d | Inspections [0.1%] |  | 21,200 | 20,000 |
| 108 | 3.16.7 | construct roof complete | milestone | 0d | 2021-10-05 | 2021-10-05 | 107 | 2021-10-05 | 2021-10-05 | 0d | 82d | 0d |  |  |  |  |

Notes:
- 107: $1200 For the Certificate for the roof installation

| ID | WBS | Task | Type | Duration | Start | Finish | Predecessors | Baseline start | Baseline finish | Baseline duration | Total slack | Free slack | Resources | Work | Cost | Baseline cost |
| --- | --- | --- | --- | --- | --- | --- | --- | --- | --- | --- | --- | --- | --- | --- | --- | --- |
| 109 | 3.17 | **Install roof tracks** |  | 90d | 2021-10-06 | 2022-02-09 | 93 | 2021-10-06 | 2022-02-09 | 90d | 82d | 0d |  | 6320h | 266,840 | 266,840 |
| 110 | 3.17.1 | Planning of roof tracks |  | 15d | 2021-10-06 | 2021-10-27 | 108 | 2021-10-06 | 2021-10-27 | 15d | 82d | 0d | Civil Engineers [300%]; Concrete Team [500%]; Site Superintendent [500%] | 1560h | 67,680 | 67,680 |
| 111 | 3.17.2 | Material for roof track |  | 10d | 2021-10-28 | 2021-11-10 | 110 | 2021-10-28 | 2021-11-10 | 10d | 82d | 0d | Civil Engineers [300%]; Concrete Team [300%] | 480h | 19,920 | 19,920 |
| 112 | 3.17.3 | Roof track assembly |  | 15d | 2021-11-11 | 2021-12-01 | 111 | 2021-11-11 | 2021-12-01 | 15d | 82d | 0d | Civil Engineers [500%]; General Labours [500%]; Roofing Engineer; Roofing Technician [600%] | 2040h | 78,840 | 78,840 |
| 113 | 3.17.4 | Levelling |  | 10d | 2021-12-02 | 2021-12-15 | 112 | 2021-12-02 | 2021-12-15 | 10d | 82d | 0d | Concrete Team [500%] | 400h | 14,000 | 14,000 |
| 114 | 3.17.5 | Integration of roof tracks |  | 10d | 2021-12-16 | 2021-12-29 | 113 | 2021-12-16 | 2021-12-29 | 10d | 82d | 0d | Civil Engineers [50%]; Infrastructure and Utilies Coordinator [50%] | 80h | 3,120 | 3,120 |
| 115 | 3.17.6 | Load Capacity verification |  | 10d | 2021-12-30 | 2022-01-12 | 114 | 2021-12-30 | 2022-01-12 | 10d | 82d | 0d | Roofing Engineer; Technology Integration Specialist | 160h | 5,360 | 5,360 |
| 116 | 3.17.7 | Saftey measures of roof tracks |  | 20d | 2022-01-13 | 2022-02-09 | 115 | 2022-01-13 | 2022-02-09 | 20d | 82d | 0d | Civil Engineers [300%]; Inspections [0.1%]; Site Superintendent [700%] | 1600h | 77,920 | 77,920 |
| 117 | 3.17.8 | Install roof tracks complete | milestone | 0d | 2022-02-09 | 2022-02-09 | 116 | 2022-02-09 | 2022-02-09 | 0d | 82d |  |  |  |  |  |
| 118 | 3.18 | **Install roof** |  | 90d | 2022-02-10 | 2022-06-16 | 101, 109 | 2022-02-10 | 2022-06-16 | 90d | 82d |  |  | 4000h | 1,190,928.72 | 1,190,928.72 |
| 119 | 3.18.1 | Preparation of roof substructure |  | 10d | 2022-02-10 | 2022-02-23 |  | 2022-02-10 | 2022-02-23 | 10d | 82d | 0d | Civil Engineers [300%]; Infrastructure and Utilies Coordinator; Roofing Engineer; Project Manager; Roofing Technician; Site Saftey Supervisor; Site Superintendent [700%] | 1200h | 55,280 | 55,280 |
| 120 | 3.18.2 | Layout of roof panel |  | 15d | 2022-02-24 | 2022-03-16 | 119 | 2022-02-24 | 2022-03-16 | 15d | 82d | 0d | Civil Engineers; Roofing Engineer; Roofing Felt [2552 square feet]; Roofing Panels [50 unit]; Roofing Project Manager; Roofing Technician [600%] | 1080h | 416,563.48 | 416,563.48 |
| 121 | 3.18.3 | Cutting of roof panel |  | 15d | 2022-03-17 | 2022-04-06 | 120 | 2022-03-17 | 2022-04-06 | 15d | 82d | 0d | Roofing Technician | 120h | 5,400 | 5,400 |
| 122 | 3.18.4 | Installation of roof panel |  | 10d | 2022-04-07 | 2022-04-20 | 121 | 2022-04-07 | 2022-04-20 | 10d | 82d | 0d | Steel Workers; Concrete Team; Electricians; Roof Sealants [8 unit]; Roofing Engineer; Roofing Felt [2552 square feet]; Roofing Panels [25 unit]; Roofing Project Manager; Roofing Technician; Security Team; Site Saftey Supervisor; Site Superintendent | 720h | 679,825.24 | 679,825.24 |
| 123 | 3.18.5 | Hip Installation |  | 10d | 2022-04-21 | 2022-05-04 | 122 | 2022-04-21 | 2022-05-04 | 10d | 82d | 0d | Concrete Team; Steel Workers; Inspections [0.1%]; Demo Team; Roofing Engineer | 320h | 11,760 | 11,760 |
| 124 | 3.18.6 | Roof Ventilation |  | 20d | 2022-05-05 | 2022-06-02 | 123 | 2022-05-05 | 2022-06-02 | 20d | 82d | 0d | Demo Team; Civil Engineers; Roofing Engineer | 480h | 20,800 | 20,800 |
| 125 | 3.18.7 | Installation of gutter |  | 10d | 2022-06-03 | 2022-06-16 | 124 | 2022-06-03 | 2022-06-16 | 10d | 82d | 0d | Cleaners [50%]; Debris Removal Coordinator [50%] | 80h | 1,300 | 1,300 |
| 126 | 3.18.8 | Install roof complete | milestone | 0d | 2022-06-16 | 2022-06-16 | 125 | 2022-06-16 | 2022-06-16 | 0d | 82d |  |  |  |  |  |
| 127 | 3.19 | **Inspection** |  | 39d | 2022-10-13 | 2022-12-06 | 41, 118, 58, 70, 85 | 2022-10-13 | 2022-12-06 | 39d | 0d |  | Inspections [0.1%] | 2104h | 138,800 | 138,800 |
| 128 | 3.19.1 | Inspection Plan |  | 5d | 2022-10-13 | 2022-10-19 |  | 2022-10-13 | 2022-10-19 | 5d | 0d |  | Inspections [0.1%]; Site Superintendent [300%]; General Labours [600%]; Health and Saftey Officer | 400h | 12,080 | 12,080 |
| 129 | 3.19.2 | Saftey Inspection report |  | 8d | 2022-10-20 | 2022-10-31 | 128 | 2022-10-20 | 2022-10-31 | 8d | 0d |  | Security Team [800%]; Inspections [0.1%]; Site Saftey Supervisor [500%]; Stadium Infrastructure Project Manager | 896h | 27,264 | 27,264 |
| 130 | 3.19.3 | Evaluation of field |  | 7d | 2022-11-01 | 2022-11-09 | 129 | 2022-11-01 | 2022-11-09 | 7d | 0d |  | Inspections [0.1%] |  | 20,000 | 20,000 |
| 131 | 3.19.4 | Inspection of lightning system |  | 4d | 2022-11-10 | 2022-11-15 | 130 | 2022-11-10 | 2022-11-15 | 4d | 0d |  | Inspections [0.1%]; Site Superintendent [500%] | 160h | 7,840 | 7,840 |
| 132 | 3.19.5 | Assessment of seating |  | 3d | 2022-11-16 | 2022-11-18 | 131 | 2022-11-16 | 2022-11-18 | 3d | 0d |  | Inspections [0.1%]; Civil Engineers [300%] | 72h | 3,456 | 3,456 |
| 133 | 3.19.6 | Inspection of the electrical system |  | 2d | 2022-11-21 | 2022-11-22 | 132 | 2022-11-21 | 2022-11-22 | 2d | 0d |  | Inspections [0.1%]; Electrical Engineers | 16h | 20,720 | 20,720 |
| 134 | 3.19.7 | Compliance verification |  | 10d | 2022-11-23 | 2022-12-06 | 133 | 2022-11-23 | 2022-12-06 | 10d | 0d |  | Site Superintendent [700%]; Inspections [0.1%] | 560h | 27,440 | 27,440 |
| 135 | 3.19.8 | Inspection complete | milestone | 0d | 2022-12-06 | 2022-12-06 | 134 | 2022-12-06 | 2022-12-06 | 0d | 0d |  |  |  |  |  |
